# G7 Plásticos Abrantes · Linha de injeção e pintura

Schedule from ProjectLibre, 2026-02-03 to 2027-05-11.

## Calendars

- Projeto G7 (seg a sex, feriados da tabela 11): Mon-Fri 08:00-12:00, 13:00-17:00; Sat-Sun off. Exceptions (off unless hours are given): 2026-02-16 to 2026-02-17, 2026-04-03, 2026-04-21, 2026-05-01, 2026-06-04, 2026-06-24, 2026-07-02, 2026-09-07, 2026-10-12, 2026-11-02, 2026-11-20, 2026-12-25, 2027-01-01, 2027-02-08 to 2027-02-09, 2027-03-26, 2027-04-21.

## Resources

| Resource |
| --- |
| Não atribuído |

## Schedule

| ID | WBS | Task | Duration | Start | Finish | Predecessors | Complete | Baseline start | Baseline finish |
| --- | --- | --- | --- | --- | --- | --- | --- | --- | --- |
| 1 | 0 | **Linha de injeção e pintura de para-choques** | 313d | 2026-02-03 | 2027-05-11 |  | 78% | 2026-02-02 | 2027-04-27 |
| 2 | 1.1 | **1.1 Engenharia e licenças** | 65d | 2026-02-03 | 2026-05-11 |  | 100% | 2026-02-02 | 2026-05-01 |
| 3 | 1.1.1 | **1.1.1 Projeto básico** | 23d | 2026-02-03 | 2026-03-09 |  | 100% | 2026-02-02 | 2026-03-04 |
| 4 | 1.1.1 | A01 Elaborar o projeto básico e o layout da linha | 23d | 2026-02-03 | 2026-03-09 |  | 100% | 2026-02-02 | 2026-03-04 |
| 5 | 1.1.2 | **1.1.2 Projetos executivos** | 38d | 2026-03-10 | 2026-05-04 |  | 100% | 2026-03-05 | 2026-04-27 |
| 6 | 1.1.2 | A02 Elaborar o projeto executivo civil e de utilidades | 25d | 2026-03-10 | 2026-04-14 | 4 | 100% | 2026-03-05 | 2026-04-13 |
| 7 | 1.1.2 | A03 Elaborar o projeto executivo elétrico e de automação | 29d | 2026-03-12 | 2026-04-22 | 4 | 100% | 2026-03-05 | 2026-04-15 |
| 8 | 1.1.2 | A04 Compatibilizar os projetos e emitir para construção | 8d | 2026-04-23 | 2026-05-04 | 6, 7 | 100% | 2026-04-16 | 2026-04-27 |
| 9 | 1.1.3 | **1.1.3 Licenças** | 46d | 2026-03-04 | 2026-05-11 |  | 100% | 2026-02-16 | 2026-05-01 |
| 10 | 1.1.3 | A05 Obter as licenças e aprovações (ambiental e bombeiros) | 46d | 2026-03-04 | 2026-05-11 | 4SS+10d | 100% | 2026-02-16 | 2026-05-01 |
| 11 | 1.1.3 | A06 Realizar a análise de risco NR-12 do projeto | 15d | 2026-04-14 | 2026-05-06 | 7SS+12d | 100% | 2026-03-23 | 2026-04-10 |
| 12 | 1.2 | **1.2 Equipamentos principais** | 183d | 2026-03-11 | 2026-12-04 |  | 97% | 2026-03-05 | 2026-11-19 |
| 13 | 1.2.1 | **1.2.1 Injetora de 3.200 t** | 183d | 2026-03-11 | 2026-12-04 |  | 94% | 2026-03-05 | 2026-11-19 |
| 14 | 1.2.1 | A07 Elaborar a especificação técnica: Injetora de 3.200 t | 9d | 2026-03-11 | 2026-03-23 | 4 | 100% | 2026-03-05 | 2026-03-17 |
| 15 | 1.2.1 | A08 Contratar o fornecimento: Injetora de 3.200 t | 9d | 2026-03-26 | 2026-04-07 | 14 | 100% | 2026-03-18 | 2026-03-27 |
| 16 | 1.2.1 | A09 Fabricar: Injetora de 3.200 t | 124d | 2026-04-10 | 2026-10-08 | 15 | 100% | 2026-03-30 | 2026-09-24 |
| 17 | 1.2.1 | A10 Aprovar os desenhos de fabricação e de bases: Injetora de 3.200 t | 11d | 2026-04-10 | 2026-04-27 | 15 | 100% | 2026-03-30 | 2026-04-14 |
| 18 | 1.2.1 | A11 Realizar o teste de aceite em fábrica (FAT): Injetora de 3.200 t | 6d | 2026-10-09 | 2026-10-19 | 16 | 100% | 2026-09-25 | 2026-10-02 |
| 19 | 1.2.1 | A12 Transportar e desembaraçar: Injetora de 3.200 t | 28d | 2026-10-20 | 2026-11-30 | 18 | 70% | 2026-10-05 | 2026-11-13 |
| 20 | 1.2.1 | A13 Receber e inspecionar na fábrica: Injetora de 3.200 t | 4d | 2026-12-01 | 2026-12-04 | 19 |  | 2026-11-16 | 2026-11-19 |
| 21 | 1.2.2 | **1.2.2 Cabine de pintura robotizada** | 142d | 2026-03-12 | 2026-10-06 |  | 100% | 2026-03-05 | 2026-10-05 |
| 22 | 1.2.2 | A14 Elaborar a especificação técnica: Cabine de pintura robotizada | 12d | 2026-03-12 | 2026-03-27 | 4 | 100% | 2026-03-05 | 2026-03-19 |
| 23 | 1.2.2 | A15 Contratar o fornecimento: Cabine de pintura robotizada | 10d | 2026-03-30 | 2026-04-13 | 22 | 100% | 2026-03-20 | 2026-04-01 |
| 24 | 1.2.2 | A16 Fabricar: Cabine de pintura robotizada | 100d | 2026-04-16 | 2026-09-09 | 23 | 100% | 2026-04-02 | 2026-09-08 |
| 25 | 1.2.2 | A17 Aprovar os desenhos de fabricação e de bases: Cabine de pintura robotizada | 12d | 2026-04-14 | 2026-04-30 | 23 | 100% | 2026-04-02 | 2026-04-17 |
| 26 | 1.2.2 | A18 Realizar o teste de aceite em fábrica (FAT): Cabine de pintura robotizada | 5d | 2026-09-11 | 2026-09-17 | 24 | 100% | 2026-09-09 | 2026-09-16 |
| 27 | 1.2.2 | A19 Transportar e descarregar: Cabine de pintura robotizada | 8d | 2026-09-18 | 2026-09-29 | 26 | 100% | 2026-09-17 | 2026-09-29 |
| 28 | 1.2.2 | A20 Receber e inspecionar na fábrica: Cabine de pintura robotizada | 4d | 2026-10-01 | 2026-10-06 | 27 | 100% | 2026-09-30 | 2026-10-05 |

| ID | WBS | Task | Duration | Start | Finish | Predecessors | Complete | Baseline start | Baseline finish |
| --- | --- | --- | --- | --- | --- | --- | --- | --- | --- |
| 29 | 1.2.3 | **1.2.3 Transportador aéreo e robôs de manipulação** | 127d | 2026-03-19 | 2026-09-22 |  | 100% | 2026-03-12 | 2026-08-10 |
| 30 | 1.2.3 | A21 Especificar e contratar: Transportador aéreo e robôs de manipulação | 21d | 2026-03-19 | 2026-04-17 | 4FS+5d | 100% | 2026-03-12 | 2026-04-07 |
| 31 | 1.2.3 | A22 Fabricar e entregar: Transportador aéreo e robôs de manipulação | 98d | 2026-04-28 | 2026-09-17 | 30 | 100% | 2026-04-08 | 2026-08-04 |
| 32 | 1.2.3 | A23 Receber e inspecionar na fábrica: Transportador aéreo e robôs de manipulação | 3d | 2026-09-18 | 2026-09-22 | 31 | 100% | 2026-08-05 | 2026-08-10 |
| 33 | 1.3 | **1.3 Obra civil e utilidades** | 90d | 2026-05-05 | 2026-09-11 |  | 100% | 2026-04-28 | 2026-07-30 |
| 34 | 1.3.1 | **1.3.1 Preparação da área** | 9d | 2026-05-05 | 2026-05-15 |  | 100% | 2026-04-28 | 2026-05-11 |
| 35 | 1.3.1 | A24 Mobilizar o canteiro e isolar a área em relação à Linha de painéis | 9d | 2026-05-05 | 2026-05-15 | 8, 10SS+25d | 100% | 2026-04-28 | 2026-05-11 |
| 36 | 1.3.2 | **1.3.2 Bases e piso** | 81d | 2026-05-18 | 2026-09-11 |  | 100% | 2026-05-12 | 2026-07-30 |
| 37 | 1.3.2 | A25 Demolir o piso existente e escavar as bases | 11d | 2026-05-18 | 2026-06-01 | 35 | 100% | 2026-05-12 | 2026-05-26 |
| 38 | 1.3.2 | A26 Executar as bases dos equipamentos | 38d | 2026-06-03 | 2026-07-29 | 37, 17, 25 | 100% | 2026-05-27 | 2026-06-26 |
| 39 | 1.3.2 | A27 Executar o piso industrial e as canaletas | 29d | 2026-08-03 | 2026-09-11 | 38 | 100% | 2026-06-29 | 2026-07-30 |
| 40 | 1.3.3 | **1.3.3 Utilidades** | 54d | 2026-06-03 | 2026-08-20 |  | 100% | 2026-05-26 | 2026-07-29 |
| 41 | 1.3.3 | A28 Instalar as redes de utilidades: água gelada, ar comprimido e tratamento de efluentes | 47d | 2026-06-03 | 2026-08-11 | 37SS+10d | 100% | 2026-05-26 | 2026-07-21 |
| 42 | 1.3.3 | A29 Testar e liberar as redes de utilidades | 6d | 2026-08-13 | 2026-08-20 | 41 | 100% | 2026-07-22 | 2026-07-29 |
| 43 | 1.3.4 | **1.3.4 Adequação predial** | 29d | 2026-05-27 | 2026-07-09 |  | 100% | 2026-05-19 | 2026-06-24 |
| 44 | 1.3.4 | A30 Adequar o prédio (cobertura, exaustão e iluminação) | 29d | 2026-05-27 | 2026-07-09 | 37SS+5d | 100% | 2026-05-19 | 2026-06-24 |
| 45 | 1.3.4 | A31 Instalar a rede de combate a incêndio da área | 16d | 2026-06-11 | 2026-07-06 | 44SS+8d | 100% | 2026-05-29 | 2026-06-22 |
| 46 | 1.4 | **1.4 Elétrica e automação** | 128d | 2026-05-06 | 2026-11-09 |  | 96% | 2026-04-28 | 2026-09-23 |
| 47 | 1.4.1 | **1.4.1 Força** | 123d | 2026-05-06 | 2026-10-30 |  | 93% | 2026-04-28 | 2026-09-16 |
| 48 | 1.4.1 | A32 Fabricar e instalar os painéis de força e a subestação | 80d | 2026-05-06 | 2026-08-28 | 8 | 100% | 2026-04-28 | 2026-06-26 |
| 49 | 1.4.1 | A33 Instalar a infraestrutura elétrica e lançar os cabos | 29d | 2026-09-14 | 2026-10-23 | 39, 48SS+15d | 90% | 2026-07-31 | 2026-09-09 |
| 50 | 1.4.1 | A34 Energizar os painéis e testar a alimentação | 5d | 2026-10-26 | 2026-10-30 | 48, 49 |  | 2026-09-10 | 2026-09-16 |
| 51 | 1.4.2 | **1.4.2 Automação de campo** | 126d | 2026-05-08 | 2026-11-09 |  | 100% | 2026-05-01 | 2026-09-23 |
| 52 | 1.4.2 | A35 Instalar a instrumentação e a rede industrial | 28d | 2026-09-29 | 2026-11-09 | 49SS+10d | 100% | 2026-08-14 | 2026-09-23 |
| 53 | 1.4.2 | A36 Programar os CLPs e o supervisório | 55d | 2026-05-08 | 2026-07-28 | 7FS+10d | 100% | 2026-05-01 | 2026-07-02 |
| 54 | 1.4.2 | A37 Testar a lógica dos CLPs em bancada | 8d | 2026-07-31 | 2026-08-11 | 53 | 100% | 2026-07-03 | 2026-07-15 |

| ID | WBS | Task | Duration | Start | Finish | Predecessors | Complete | Baseline start | Baseline finish |
| --- | --- | --- | --- | --- | --- | --- | --- | --- | --- |
| 55 | 1.5 | **1.5 Montagem** | 93d | 2026-10-07 | 2027-02-23 |  | 21% | 2026-10-06 | 2027-02-05 |
| 56 | 1.5.1 | **1.5.1 Montagem mecânica** | 74d | 2026-10-07 | 2027-01-25 |  | 30% | 2026-10-06 | 2027-01-11 |
| 57 | 1.5.1 | A38 Montar: Injetora de 3.200 t | 27d | 2026-12-07 | 2027-01-14 | 20, 39 |  | 2026-11-20 | 2026-12-30 |
| 58 | 1.5.1 | A39 Montar: Cabine de pintura robotizada | 23d | 2026-10-07 | 2026-11-10 | 28, 39 | 100% | 2026-10-06 | 2026-11-10 |
| 59 | 1.5.1 | A40 Montar e interligar: Transportador aéreo e robôs de manipulação | 20d | 2026-12-17 | 2027-01-15 | 32, 57SS+8d, 58SS+8d |  | 2026-12-03 | 2026-12-30 |
| 60 | 1.5.1 | A41 Alinhar e nivelar os equipamentos | 7d | 2027-01-15 | 2027-01-25 | 57, 58 |  | 2026-12-31 | 2027-01-11 |
| 61 | 1.5.2 | **1.5.2 Interligações e segurança** | 26d | 2027-01-15 | 2027-02-23 |  |  | 2026-12-31 | 2027-02-05 |
| 62 | 1.5.2 | A42 Interligar eletricamente os equipamentos | 16d | 2027-01-15 | 2027-02-05 | 50, 57, 58 |  | 2026-12-31 | 2027-01-22 |
| 63 | 1.5.2 | A43 Instalar as proteções e adequar a linha à NR-12 | 13d | 2027-01-26 | 2027-02-15 | 11, 59, 60 |  | 2027-01-12 | 2027-01-28 |
| 64 | 1.5.2 | A44 Emitir o laudo de conformidade com a NR-12 | 6d | 2027-02-16 | 2027-02-23 | 63 |  | 2027-01-29 | 2027-02-05 |
| 65 | 1.6 | **1.6 Comissionamento e partida** | 239d | 2026-05-15 | 2027-05-03 |  | 18% | 2026-05-11 | 2027-04-16 |
| 66 | 1.6.1 | **1.6.1 Testes** | 217d | 2026-05-15 | 2027-03-31 |  | 32% | 2026-05-11 | 2027-03-16 |
| 67 | 1.6.1 | A45 Elaborar os procedimentos de comissionamento e partida | 12d | 2026-05-15 | 2026-06-01 | 7FS+15d | 100% | 2026-05-11 | 2026-05-25 |
| 68 | 1.6.1 | A46 Executar os testes a frio (sem produto) | 14d | 2027-02-24 | 2027-03-15 | 42, 45, 52, 54, 62, 64, 67 |  | 2027-02-08 | 2027-03-01 |
| 69 | 1.6.1 | A47 Executar o teste de aceite em campo (SAT) com produto | 11d | 2027-03-16 | 2027-03-31 | 68, 88 |  | 2027-03-02 | 2027-03-16 |
| 70 | 1.6.2 | **1.6.2 Partida** | 22d | 2027-04-01 | 2027-05-03 |  |  | 2027-03-17 | 2027-04-16 |
| 71 | 1.6.2 | A48 Corrigir as pendências do teste de aceite | 9d | 2027-04-01 | 2027-04-13 | 69 |  | 2027-03-17 | 2027-03-29 |
| 72 | 1.6.2 | A49 Conduzir a partida assistida e a curva de ramp-up | 22d | 2027-04-01 | 2027-05-03 | 69, 79, 78 |  | 2027-03-17 | 2027-04-16 |
| 73 | 1.7 | **1.7 Pessoas e transição** | 266d | 2026-04-14 | 2027-05-11 |  | 58% | 2026-04-02 | 2027-04-27 |
| 74 | 1.7.1 | **1.7.1 Pessoas** | 31d | 2026-05-08 | 2026-06-22 |  | 100% | 2026-05-04 | 2026-06-16 |
| 75 | 1.7.1 | A50 Recrutar e contratar os operadores da nova linha | 31d | 2026-05-08 | 2026-06-22 | 4FS+40d | 100% | 2026-05-04 | 2026-06-16 |
| 76 | 1.7.2 | **1.7.2 Treinamento** | 205d | 2026-04-14 | 2027-02-09 |  | 66% | 2026-04-02 | 2027-01-22 |
| 77 | 1.7.2 | A51 Elaborar o plano de treinamento e os materiais | 15d | 2026-04-14 | 2026-05-06 | 7SS+20d | 100% | 2026-04-02 | 2026-04-27 |
| 78 | 1.7.2 | A52 Elaborar os procedimentos operacionais padrão | 16d | 2026-05-07 | 2026-05-28 | 77 | 100% | 2026-04-28 | 2026-05-20 |
| 79 | 1.7.2 | A53 Treinar os operadores e a equipe de manutenção | 16d | 2027-01-18 | 2027-02-09 | 77, 59, 75 |  | 2026-12-31 | 2027-01-22 |

| ID | WBS | Task | Duration | Start | Finish | Predecessors | Complete | Baseline start | Baseline finish |
| --- | --- | --- | --- | --- | --- | --- | --- | --- | --- |
| 80 | 1.7.3 | **1.7.3 Encerramento** | 53d | 2027-02-24 | 2027-05-11 |  |  | 2027-02-08 | 2027-04-27 |
| 81 | 1.7.3 | A54 Organizar os sobressalentes, os planos de manutenção e o data book | 16d | 2027-02-24 | 2027-03-17 | 68SS |  | 2027-02-08 | 2027-03-03 |
| 82 | 1.7.3 | A55 Registrar as lições aprendidas e desmobilizar o canteiro | 7d | 2027-04-15 | 2027-04-26 | 72SS+10d |  | 2027-03-31 | 2027-04-08 |
| 83 | 1.7.3 | A56 Formalizar o aceite final e encerrar o projeto | 6d | 2027-05-04 | 2027-05-11 | 71, 72, 81, 82, 90 |  | 2027-04-19 | 2027-04-27 |
| 84 | 1.8 | **1.8 Sistemas digitais da linha (frente ágil)** | 206d | 2026-05-04 | 2027-03-02 |  | 37% | 2026-05-01 | 2026-12-24 |
| 85 | 1.8.1 | **1.8.1 Release 1 (MVP)** | 67d | 2026-05-04 | 2026-08-07 |  | 100% | 2026-05-01 | 2026-07-10 |
| 86 | 1.8.1 | A57 Desenvolver até a Release 1 (MVP) — sprints 1 a 5 | 67d | 2026-05-04 | 2026-08-07 | 4SS+60d | 100% | 2026-05-01 | 2026-07-10 |
| 87 | 1.8.2 | **1.8.2 Release 2** | 59d | 2026-09-14 | 2026-12-08 |  |  | 2026-07-13 | 2026-10-02 |
| 88 | 1.8.2 | A58 Desenvolver até a Release 2 — sprints 6 a 11 | 59d | 2026-09-14 | 2026-12-08 | 86 |  | 2026-07-13 | 2026-10-02 |
| 89 | 1.8.3 | **1.8.3 Release 3** | 56d | 2026-12-09 | 2027-03-02 |  |  | 2026-10-05 | 2026-12-24 |
| 90 | 1.8.3 | A59 Desenvolver até a Release 3 — sprints 12 a 17 | 56d | 2026-12-09 | 2027-03-02 | 88 |  | 2026-10-05 | 2026-12-24 |
