# Linha de injeção e pintura de para-choques

Schedule from MS Project XML, 2026-02-02 to 2026-02-02, status date 2026-11-13.

## Calendars

- Projeto G7 (seg a sex, feriados da tabela 11): Mon-Fri 08:00-12:00, 13:00-17:00; Sat-Sun off.

## Schedule

| ID | WBS | Task | Duration | Start | Predecessors |
| --- | --- | --- | --- | --- | --- |
| 1 | 1.1 | **1.1 Engenharia e licenças** |  |  |  |
| 2 | 1.1.1 | **1.1.1 Projeto básico** |  |  |  |
| 3 | 1.1.1 | A01 Elaborar o projeto básico e o layout da linha | 21d | 2026-02-02 |  |
| 4 | 1.1.2 | **1.1.2 Projetos executivos** |  |  |  |
| 5 | 1.1.2 | A02 Elaborar o projeto executivo civil e de utilidades | 27d | 2026-02-02 | 3 |
| 6 | 1.1.2 | A03 Elaborar o projeto executivo elétrico e de automação | 29d | 2026-02-02 | 3 |
| 7 | 1.1.2 | A04 Compatibilizar os projetos e emitir para construção | 7d | 2026-02-02 | 5, 6 |
| 8 | 1.1.3 | **1.1.3 Licenças** |  |  |  |
| 9 | 1.1.3 | A05 Obter as licenças e aprovações (ambiental e bombeiros) | 51d | 2026-02-02 | 3SS+10d |
| 10 | 1.1.3 | A06 Realizar a análise de risco NR-12 do projeto | 14d | 2026-02-02 | 6SS+12d |
| 11 | 1.2 | **1.2 Equipamentos principais** |  |  |  |
| 12 | 1.2.1 | **1.2.1 Injetora de 3.200 t** |  |  |  |
| 13 | 1.2.1 | A07 Elaborar a especificação técnica: Injetora de 3.200 t | 9d | 2026-02-02 | 3 |
| 14 | 1.2.1 | A08 Contratar o fornecimento: Injetora de 3.200 t | 8d | 2026-02-02 | 13 |
| 15 | 1.2.1 | A09 Fabricar: Injetora de 3.200 t | 122d | 2026-02-02 | 14 |
| 16 | 1.2.1 | A10 Aprovar os desenhos de fabricação e de bases: Injetora de 3.200 t | 11d | 2026-02-02 | 14 |
| 17 | 1.2.1 | A11 Realizar o teste de aceite em fábrica (FAT): Injetora de 3.200 t | 6d | 2026-02-02 | 15 |
| 18 | 1.2.1 | A12 Transportar e desembaraçar: Injetora de 3.200 t | 28d | 2026-02-02 | 17 |
| 19 | 1.2.1 | A13 Receber e inspecionar na fábrica: Injetora de 3.200 t | 4d | 2026-02-02 | 18 |
| 20 | 1.2.2 | **1.2.2 Cabine de pintura robotizada** |  |  |  |
| 21 | 1.2.2 | A14 Elaborar a especificação técnica: Cabine de pintura robotizada | 11d | 2026-02-02 | 3 |
| 22 | 1.2.2 | A15 Contratar o fornecimento: Cabine de pintura robotizada | 9d | 2026-02-02 | 21 |
| 23 | 1.2.2 | A16 Fabricar: Cabine de pintura robotizada | 108d | 2026-02-02 | 22 |
| 24 | 1.2.2 | A17 Aprovar os desenhos de fabricação e de bases: Cabine de pintura robotizada | 11d | 2026-02-02 | 22 |
| 25 | 1.2.2 | A18 Realizar o teste de aceite em fábrica (FAT): Cabine de pintura robotizada | 6d | 2026-02-02 | 23 |
| 26 | 1.2.2 | A19 Transportar e descarregar: Cabine de pintura robotizada | 9d | 2026-02-02 | 25 |
| 27 | 1.2.2 | A20 Receber e inspecionar na fábrica: Cabine de pintura robotizada | 4d | 2026-02-02 | 26 |

| ID | WBS | Task | Duration | Start | Predecessors |
| --- | --- | --- | --- | --- | --- |
| 28 | 1.2.3 | **1.2.3 Transportador aéreo e robôs de manipulação** |  |  |  |
| 29 | 1.2.3 | A21 Especificar e contratar: Transportador aéreo e robôs de manipulação | 19d | 2026-02-02 | 3FS+5d |
| 30 | 1.2.3 | A22 Fabricar e entregar: Transportador aéreo e robôs de manipulação | 80d | 2026-02-02 | 29 |
| 31 | 1.2.3 | A23 Receber e inspecionar na fábrica: Transportador aéreo e robôs de manipulação | 4d | 2026-02-02 | 30 |
| 32 | 1.3 | **1.3 Obra civil e utilidades** |  |  |  |
| 33 | 1.3.1 | **1.3.1 Preparação da área** |  |  |  |
| 34 | 1.3.1 | A24 Mobilizar o canteiro e isolar a área em relação à Linha de painéis | 9d | 2026-02-02 | 7, 9SS+25d |
| 35 | 1.3.2 | **1.3.2 Bases e piso** |  |  |  |
| 36 | 1.3.2 | A25 Demolir o piso existente e escavar as bases | 11d | 2026-02-02 | 34 |
| 37 | 1.3.2 | A26 Executar as bases dos equipamentos | 21d | 2026-02-02 | 36, 16, 24 |
| 38 | 1.3.2 | A27 Executar o piso industrial e as canaletas | 23d | 2026-02-02 | 37 |
| 39 | 1.3.3 | **1.3.3 Utilidades** |  |  |  |
| 40 | 1.3.3 | A28 Instalar as redes de utilidades: água gelada, ar comprimido e tratamento de efluentes | 38d | 2026-02-02 | 36SS+10d |
| 41 | 1.3.3 | A29 Testar e liberar as redes de utilidades | 6d | 2026-02-02 | 40 |
| 42 | 1.3.4 | **1.3.4 Adequação predial** |  |  |  |
| 43 | 1.3.4 | A30 Adequar o prédio (cobertura, exaustão e iluminação) | 26d | 2026-02-02 | 36SS+5d |
| 44 | 1.3.4 | A31 Instalar a rede de combate a incêndio da área | 16d | 2026-02-02 | 43SS+8d |
| 45 | 1.4 | **1.4 Elétrica e automação** |  |  |  |
| 46 | 1.4.1 | **1.4.1 Força** |  |  |  |
| 47 | 1.4.1 | A32 Fabricar e instalar os painéis de força e a subestação | 42d | 2026-02-02 | 7 |
| 48 | 1.4.1 | A33 Instalar a infraestrutura elétrica e lançar os cabos | 29d | 2026-02-02 | 38, 47SS+15d |
| 49 | 1.4.1 | A34 Energizar os painéis e testar a alimentação | 5d | 2026-02-02 | 47, 48 |
| 50 | 1.4.2 | **1.4.2 Automação de campo** |  |  |  |
| 51 | 1.4.2 | A35 Instalar a instrumentação e a rede industrial | 28d | 2026-02-02 | 48SS+10d |
| 52 | 1.4.2 | A36 Programar os CLPs e o supervisório | 42d | 2026-02-02 | 6FS+10d |
| 53 | 1.4.2 | A37 Testar a lógica dos CLPs em bancada | 9d | 2026-02-02 | 52 |

| ID | WBS | Task | Duration | Start | Predecessors |
| --- | --- | --- | --- | --- | --- |
| 54 | 1.5 | **1.5 Montagem** |  |  |  |
| 55 | 1.5.1 | **1.5.1 Montagem mecânica** |  |  |  |
| 56 | 1.5.1 | A38 Montar: Injetora de 3.200 t | 27d | 2026-02-02 | 19, 38 |
| 57 | 1.5.1 | A39 Montar: Cabine de pintura robotizada | 24d | 2026-02-02 | 27, 38 |
| 58 | 1.5.1 | A40 Montar e interligar: Transportador aéreo e robôs de manipulação | 20d | 2026-02-02 | 31, 56SS+8d, 57SS+8d |
| 59 | 1.5.1 | A41 Alinhar e nivelar os equipamentos | 7d | 2026-02-02 | 56, 57 |
| 60 | 1.5.2 | **1.5.2 Interligações e segurança** |  |  |  |
| 61 | 1.5.2 | A42 Interligar eletricamente os equipamentos | 16d | 2026-02-02 | 49, 56, 57 |
| 62 | 1.5.2 | A43 Instalar as proteções e adequar a linha à NR-12 | 13d | 2026-02-02 | 58, 59, 10 |
| 63 | 1.5.2 | A44 Emitir o laudo de conformidade com a NR-12 | 6d | 2026-02-02 | 62 |
| 64 | 1.6 | **1.6 Comissionamento e partida** |  |  |  |
| 65 | 1.6.1 | **1.6.1 Testes** |  |  |  |
| 66 | 1.6.1 | A45 Elaborar os procedimentos de comissionamento e partida | 11d | 2026-02-02 | 6FS+15d |
| 67 | 1.6.1 | A46 Executar os testes a frio (sem produto) | 14d | 2026-02-02 | 61, 63, 51, 53, 41, 44, 66 |
| 68 | 1.6.1 | A47 Executar o teste de aceite em campo (SAT) com produto | 11d | 2026-02-02 | 67, 87 |
| 69 | 1.6.2 | **1.6.2 Partida** |  |  |  |
| 70 | 1.6.2 | A48 Corrigir as pendências do teste de aceite | 9d | 2026-02-02 | 68 |
| 71 | 1.6.2 | A49 Conduzir a partida assistida e a curva de ramp-up | 22d | 2026-02-02 | 68, 78, 77 |
| 72 | 1.7 | **1.7 Pessoas e transição** |  |  |  |
| 73 | 1.7.1 | **1.7.1 Pessoas** |  |  |  |
| 74 | 1.7.1 | A50 Recrutar e contratar os operadores da nova linha | 31d | 2026-02-02 | 3FS+40d |
| 75 | 1.7.2 | **1.7.2 Treinamento** |  |  |  |
| 76 | 1.7.2 | A51 Elaborar o plano de treinamento e os materiais | 16d | 2026-02-02 | 6SS+20d |
| 77 | 1.7.2 | A52 Elaborar os procedimentos operacionais padrão | 16d | 2026-02-02 | 76 |
| 78 | 1.7.2 | A53 Treinar os operadores e a equipe de manutenção | 16d | 2026-02-02 | 76, 58, 74 |

| ID | WBS | Task | Duration | Start | Predecessors |
| --- | --- | --- | --- | --- | --- |
| 79 | 1.7.3 | **1.7.3 Encerramento** |  |  |  |
| 80 | 1.7.3 | A54 Organizar os sobressalentes, os planos de manutenção e o data book | 16d | 2026-02-02 | 67SS |
| 81 | 1.7.3 | A55 Registrar as lições aprendidas e desmobilizar o canteiro | 7d | 2026-02-02 | 71SS+10d |
| 82 | 1.7.3 | A56 Formalizar o aceite final e encerrar o projeto | 6d | 2026-02-02 | 71, 80, 89, 70, 81 |
| 83 | 1.8 | **1.8 Sistemas digitais da linha (frente ágil)** |  |  |  |
| 84 | 1.8.1 | **1.8.1 Release 1 (MVP)** |  |  |  |
| 85 | 1.8.1 | A57 Desenvolver até a Release 1 (MVP) — sprints 1 a 5 | 47d | 2026-02-02 | 3SS+60d |
| 86 | 1.8.2 | **1.8.2 Release 2** |  |  |  |
| 87 | 1.8.2 | A58 Desenvolver até a Release 2 — sprints 6 a 11 | 59d | 2026-02-02 | 85 |
| 88 | 1.8.3 | **1.8.3 Release 3** |  |  |  |
| 89 | 1.8.3 | A59 Desenvolver até a Release 3 — sprints 12 a 17 | 56d | 2026-02-02 | 87 |
